# 用户中心--开发计划

Schedule from MS Project, 2012-11-13 to 2013-01-02.
微软中国

## Calendars

- 标准: Mon-Fri 08:00-12:00, 13:00-17:00; Sat-Sun off.

## Resources

| Resource | Group |
| --- | --- |
| 覃家良 | 三组 |
| 张成国 | 三组 |
| 产品部/技术部相关人员 |  |
| 产品部UI |  |
| 测试组 |  |
| 测试组/覃家良 |  |
| 技术部 |  |

## Schedule

| ID | WBS | Task | Duration | Start | Finish | Predecessors | Total slack | Free slack | Constraint | Resources | Work |
| --- | --- | --- | --- | --- | --- | --- | --- | --- | --- | --- | --- |
| 1 | 1 | **用户中心** | 36.5d | 2012-11-13 | 2013-01-02 |  | 0.5d |  |  |  | 620h |
| 2 | 1.1 | 项目流程、数据字典讨论 | 3d | 2012-11-13 | 2012-11-15 |  | 25d | 0d |  | 产品部/技术部相关人员 | 24h |
| 3 | 1.2 | **demo实例** | 2d | 2012-11-16 | 2012-11-19 | 2 | 31d |  |  | 技术部 | 16h |
| 4 | 1.2.1 | 创建客户端应用接口 | 0.5d | 2012-11-16 | 2012-11-16 |  | 31d | 0d |  |  |  |
| 5 | 1.2.2 | 创建用户中心监听接口 | 0.5d | 2012-11-16 | 2012-11-16 | 4 | 18d | 0d |  |  |  |
| 6 | 1.2.3 | 测试、讨论、优化 | 1d | 2012-11-19 | 2012-11-19 | 5 | 18d | 0d |  |  |  |
| 7 | 1.3 | **平台搭建、配置** | 1d | 2012-11-20 | 2012-11-20 | 6 | 31d |  |  |  |  |
| 8 | 1.3.1 | 系统安装安装、配置(vps: CentOS6.2 64bit) | 0.5d | 2012-11-20 | 2012-11-20 |  | 18.5d |  |  |  |  |
| 9 | 1.3.2 | svn安装、配置 | 0.5d | 2012-11-20 | 2012-11-20 |  | 18d |  |  |  |  |
| 10 | 1.3.3 | nginx+php+mongodb安装、配置 | 0.5d | 2012-11-20 | 2012-11-20 | 9 | 18d |  |  |  |  |
| 11 | 1.4 | **产品部--提供注册、登录、SSO页面、帮助前台页** | 10d | 2012-11-30 | 2012-12-13 |  | 13.5d |  |  | 产品部UI | 88h |
| 12 | 1.4.1 | 注册页、登录页、SSO页（登录过渡页） | 2d | 2012-11-30 | 2012-12-03 |  | 13.5d | 0d | start no earlier than 2012-11-30 |  |  |
| 13 | 1.4.2 | 帮助中心前台页(首页、列表页、详细页) | 2d | 2012-12-04 | 2012-12-05 | 12 | 13.5d | 0d |  |  |  |
| 14 | 1.4.3 | 页面评审 | 1d | 2012-12-06 | 2012-12-06 | 13 | 13.5d | 0d |  | 产品部/技术部相关人员 | 8h |
| 15 | 1.4.4 | 前端切割html | 5d | 2012-12-07 | 2012-12-13 | 14 | 13.5d |  |  |  |  |
| 16 | 1.5 | **后台** | 19d | 2012-11-20 | 2012-12-14 |  | 0d |  |  |  | 192h |
| 17 | 1.5.1 | **管理员信息维护** | 2.5d | 2012-11-20 | 2012-11-22 |  | 0d |  |  | 张成国 | 20h |
| 18 | 1.5.1.1 | 管理员列表 | 1d | 2012-11-20 | 2012-11-20 |  | 0d |  | start no earlier than 2012-11-20 |  |  |
| 19 | 1.5.1.2 | 增加、修改管理员 | 0.5d | 2012-11-21 | 2012-11-21 | 18 | 0d |  |  |  |  |
| 20 | 1.5.1.3 | 权限设置 | 1d | 2012-11-21 | 2012-11-22 | 19 | 0d |  |  |  |  |
| 21 | 1.5.2 | **RBAC权限设计** | 4d | 2012-11-22 | 2012-11-28 | 17 | 0d |  |  |  |  |
| 22 | 1.5.2.1 | 角色管理（增、删、改） | 2d | 2012-11-22 | 2012-11-26 |  | 0d |  |  |  |  |
| 23 | 1.5.2.2 | 节点管理（增、删、改） | 2d | 2012-11-26 | 2012-11-28 | 22 | 0d |  |  |  |  |
| 24 | 1.5.3 | **应用接入管理** | 3d | 2012-11-21 | 2012-11-23 |  | 9d | 0d |  | 覃家良 | 24h |
| 25 | 1.5.3.1 | 增加、调试 | 1d | 2012-11-21 | 2012-11-21 |  | 9d | 0d | start no earlier than 2012-11-21 |  |  |
| 26 | 1.5.3.2 | 列表、删除、修改 | 2d | 2012-11-22 | 2012-11-23 | 25 | 2.5d |  |  |  |  |

| ID | WBS | Task | Duration | Start | Finish | Predecessors | Total slack | Constraint | Resources | Work |
| --- | --- | --- | --- | --- | --- | --- | --- | --- | --- | --- |
| 27 | 1.5.4 | **用户信息管理** | 2d | 2012-11-28 | 2012-11-30 | 21 | 0d |  | 张成国 | 16h |
| 28 | 1.5.4.1 | 列表、增加、删除、修改 | 2d | 2012-11-28 | 2012-11-30 |  | 0d |  |  |  |
| 29 | 1.5.5 | **用户帮助中心后台** | 6d | 2012-11-30 | 2012-12-10 | 27 | 0d |  | 张成国 | 48h |
| 30 | 1.5.5.1 | **帮助分类** | 0.5d | 2012-11-30 | 2012-11-30 |  | 0d |  |  |  |
| 31 | 1.5.5.1.1 | 列表、增加、删除、修改 | 0.5d | 2012-11-30 | 2012-11-30 |  | 0d |  |  |  |
| 32 | 1.5.5.2 | **帮助类别** | 0.5d | 2012-12-03 | 2012-12-03 | 30 | 0d |  |  |  |
| 33 | 1.5.5.2.1 | 列表、增加、删除、修改 | 0.5d | 2012-12-03 | 2012-12-03 |  | 0d |  |  |  |
| 34 | 1.5.5.3 | **帮助信息管理** | 4d | 2012-12-03 | 2012-12-07 | 32 | 0d |  |  |  |
| 35 | 1.5.5.3.1 | 列表、增加、修改、删除 | 2d | 2012-12-03 | 2012-12-05 |  | 0d |  |  |  |
| 36 | 1.5.5.3.2 | 帮助搜索相关 | 2d | 2012-12-05 | 2012-12-07 | 35 | 0d |  |  |  |
| 37 | 1.5.5.4 | **回收站** | 1d | 2012-12-07 | 2012-12-10 | 34 | 0d |  |  |  |
| 38 | 1.5.5.4.1 | 列表、恢复、删除 | 1d | 2012-12-07 | 2012-12-10 |  | 0d |  |  |  |
| 39 | 1.5.6 | 用户登录日志 | 1d | 2012-12-10 | 2012-12-11 | 29 | 0d | start no earlier than 2012-11-16 | 张成国 | 8h |
| 40 | 1.5.7 | 进程运行日志 | 1d | 2012-12-11 | 2012-12-12 | 39 | 0d |  | 张成国 | 8h |
| 41 | 1.5.8 | 后台登陆 | 0.5d | 2012-12-12 | 2012-12-12 | 40 | 0d |  | 张成国 | 4h |
| 42 | 1.5.9 | 后台测试 | 8d | 2012-11-30 | 2012-12-11 |  | 3.5d | start no earlier than 2012-11-30 | 测试组 | 64h |
| 43 | 1.5.10 | 修复Bugs | 2d | 2012-12-13 | 2012-12-14 | 41 | 0d |  |  |  |
| 44 | 1.6 | **会员中心前台** | 12.5d | 2012-12-17 | 2013-01-02 | 16 | 0d |  | 张成国 | 140h |
| 45 | 1.6.1 | 用户注册、记录日志 | 2d | 2012-12-17 | 2012-12-18 |  | 0d | start no earlier than 2012-11-20 |  |  |
| 46 | 1.6.2 | 用户登录、SSO页面 | 2d | 2012-12-19 | 2012-12-20 | 45 | 0d | start no earlier than 2012-11-22 |  |  |
| 47 | 1.6.3 | 应用-SSO调用页面 | 2d | 2012-12-21 | 2012-12-24 | 46 | 0d | start no earlier than 2012-11-23 |  |  |
| 48 | 1.6.4 | **用户帮助** | 5.5d | 2012-12-25 | 2013-01-01 | 47 | 0d |  |  |  |
| 49 | 1.6.4.1 | **图文帮助信息** | 2d | 2012-12-25 | 2012-12-26 |  | 0d |  |  |  |
| 50 | 1.6.4.1.1 | 帮助首页 | 1d | 2012-12-25 | 2012-12-25 |  | 0d |  |  |  |
| 51 | 1.6.4.1.2 | 帮助列表页 | 0.5d | 2012-12-26 | 2012-12-26 | 50 | 0d |  |  |  |
| 52 | 1.6.4.1.3 | 帮助详细页 | 0.5d | 2012-12-26 | 2012-12-26 | 51 | 0d |  |  |  |

| ID | WBS | Task | Duration | Start | Finish | Predecessors | Total slack | Free slack | Constraint | Resources | Work |
| --- | --- | --- | --- | --- | --- | --- | --- | --- | --- | --- | --- |
| 53 | 1.6.4.2 | **视频帮助信息** | 1.5d | 2012-12-27 | 2012-12-28 | 49 | 0d |  |  |  |  |
| 54 | 1.6.4.2.1 | 帮助首页 | 0.5d | 2012-12-27 | 2012-12-27 |  | 0d |  |  |  |  |
| 55 | 1.6.4.2.2 | 帮助列表页 | 0.5d | 2012-12-27 | 2012-12-27 | 54 | 0d |  |  |  |  |
| 56 | 1.6.4.2.3 | 帮助详细页 | 0.5d | 2012-12-28 | 2012-12-28 | 55 | 0d |  |  |  |  |
| 57 | 1.6.4.3 | 问题搜索 | 2d | 2012-12-28 | 2013-01-01 | 53 | 0d |  |  |  |  |
| 58 | 1.6.5 | 前台测试 | 5d | 2012-12-25 | 2012-12-31 |  | 1.5d |  | start no earlier than 2012-12-25 | 测试组 | 40h |
| 59 | 1.6.6 | 修复BUG | 1d | 2013-01-01 | 2013-01-02 | 48 | 0d |  |  |  |  |
| 60 | 1.7 | **守护进程** | 8d | 2012-11-26 | 2012-12-05 | 24 | 9d | 0d |  | 覃家良 | 80h |
| 61 | 1.7.1 | 用户中心--推送进程 | 2d | 2012-11-26 | 2012-11-27 |  | 9d | 0d | start no earlier than 2012-11-19 |  |  |
| 62 | 1.7.2 | 用户中心--监听进程 | 2d | 2012-11-28 | 2012-11-29 | 61 | 9d | 0d | start no earlier than 2012-11-20 |  |  |
| 63 | 1.7.3 | 服装网--监听进程 | 1d | 2012-11-30 | 2012-11-30 | 62 | 9d | 0d | start no earlier than 2012-11-21 |  |  |
| 64 | 1.7.4 | 箱包网--监听进程 | 1d | 2012-12-03 | 2012-12-03 | 63 | 9d | 0d | start no earlier than 2012-11-23 |  |  |
| 65 | 1.7.5 | 进程测试、修改BUG | 2d | 2012-12-04 | 2012-12-05 | 64 | 9d |  |  | 测试组/覃家良 | 16h |
| 66 | 1.8 | **应用接口** | 8d | 2012-12-06 | 2012-12-17 | 60 | 9d |  |  | 覃家良 | 80h |
| 67 | 1.8.1 | 用户中心--修改密码 | 1d | 2012-12-06 | 2012-12-06 |  | 9d | 0d | start no earlier than 2012-11-27 |  |  |
| 68 | 1.8.2 | 用户中心--修改用户信息 | 1d | 2012-12-07 | 2012-12-07 | 67 | 9d | 0d | start no earlier than 2012-11-28 |  |  |
| 69 | 1.8.3 | **服装网-客户端接口** | 2d | 2012-12-10 | 2012-12-11 | 68 | 9d |  |  |  |  |
| 70 | 1.8.3.1 | 密码修改接口 | 1d | 2012-12-10 | 2012-12-10 |  | 9d | 0d |  |  |  |
| 71 | 1.8.3.2 | 用户信息修改接口 | 1d | 2012-12-11 | 2012-12-11 | 70 | 9d | 0d |  |  |  |
| 72 | 1.8.4 | **箱包网-客户端接口** | 2d | 2012-12-12 | 2012-12-13 | 71 | 9d |  |  |  |  |
| 73 | 1.8.4.1 | 密码修改接口 | 1d | 2012-12-12 | 2012-12-12 |  | 9d | 0d |  |  |  |
| 74 | 1.8.4.2 | 用户信息修改接口 | 1d | 2012-12-13 | 2012-12-13 | 73 | 9d | 0d |  |  |  |
| 75 | 1.8.5 | 接口测试、修改BUG | 2d | 2012-12-14 | 2012-12-17 | 74 | 9d | 0d |  | 测试组/覃家良 | 16h |
| 76 | 2 | 整体测试 | 3d | 2012-12-18 | 2012-12-20 | 75 | 7.5d |  |  | 测试组 | 24h |
